# caarray_schedule_2_1_1

Schedule from MS Project, 2008-08-01 to 2008-10-22.
Sony Electronics, Inc.

## Calendars

- Standard: Mon-Fri 08:00-12:00, 13:00-17:00; Sat-Sun off.

## Resources

| Resource |
| --- |
| mduncan |
| rsrinivasa |
| dkokotov |
| slustbader |
| mshestopalov |
| jgill |
| bpickeral |
| reedya |
| keener |
| misquitta |
| kc |
| DBA |
| Systems |

## Schedule

| ID | WBS | Task | Type | Duration | Start | Finish | Predecessors | Total slack | Free slack | Constraint | Resources | Work |
| --- | --- | --- | --- | --- | --- | --- | --- | --- | --- | --- | --- | --- |
| 1 | 1 | Milestone: Begin 2.1.1 Release | milestone | 0d | 2008-08-01 | 2008-08-01 |  | 0d |  |  |  |  |
| 2 | 2 | **Construction RC** |  | 29d? | 2008-08-01 | 2008-09-10 |  | 0d |  |  |  | 1160h |
| 3 | 2.1 | Milestone: Begin RC Construction | milestone | 0d | 2008-08-01 | 2008-08-01 | 1 | 0d |  |  |  |  |
| 4 | 2.2 | Project Management |  | 1d? | 2008-08-01 | 2008-08-01 | 3 | 57.5d |  |  | mduncan | 8h |
| 5 | 2.3 | **Requirements Management** |  | 1d? | 2008-08-01 | 2008-08-01 | 3 | 57.5d |  |  | rsrinivasa | 8h |
| 6 | 2.3.1 | Verify Defects on DEV |  | 1d | 2008-08-28 | 2008-08-28 | 10 | 0d |  |  | dkokotov; slustbader; mshestopalov; jgill; bpickeral | 40h |
| 7 | 2.4 | **Implementation** |  | 20d? | 2008-08-01 | 2008-08-28 |  | 0d |  |  |  | 800h |
| 8 | 2.4.1 | Milestone: Begin Implementation of RC | milestone | 0d | 2008-08-01 | 2008-08-01 | 3 | 58.5d |  |  |  |  |
| 9 | 2.4.2 | Milestone: Deploy RC to QA | milestone | 0d | 2008-08-28 | 2008-08-28 | 6 | 0d |  |  |  |  |
| 10 | 2.4.3 | Develop RC release |  | 19d? | 2008-08-01 | 2008-08-27 | 3 | 0d |  | finish no earlier than 2008-08-27 | dkokotov; slustbader; mshestopalov; jgill; bpickeral | 760h |
| 11 | 2.4.4 | Regression Test |  | 5d | 2008-08-29 | 2008-09-04 | 9 | 26d | 0d |  | reedya; keener; misquitta | 120h |
| 12 | 2.5 | **Test** |  | 9d | 2008-08-28 | 2008-09-10 |  | 29.5d |  |  |  | 344h |
| 13 | 2.5.1 | Milestone: Begin RC1 Testing | milestone | 0d | 2008-08-28 | 2008-08-28 | 9 | 29.5d | 0d |  |  |  |
| 14 | 2.5.2 | Verify Defects on QA |  | 4d | 2008-08-29 | 2008-09-03 | 13 | 29.5d | 0d |  | reedya; keener; misquitta | 96h |
| 15 | 2.5.3 | Deploy to Stage |  | 1d | 2008-09-04 | 2008-09-04 | 14 | 29.5d | 0d |  |  |  |
| 16 | 2.5.4 | Stage Test |  | 4d | 2008-09-05 | 2008-09-10 | 15 | 29.5d | 0d |  | reedya; keener; misquitta | 96h |
| 17 | 2.5.5 | Installer Test |  | 4d | 2008-09-05 | 2008-09-10 | 14, 11 | 29.5d | 0d | start no earlier than 2008-09-05 | keener | 32h |
| 18 | 2.5.6 | Security Scan |  | 4d | 2008-09-05 | 2008-09-10 | 14, 11 | 29.5d |  |  |  |  |
| 19 | 2.5.7 | Milestone: RC testing complete | milestone | 0d | 2008-09-10 | 2008-09-10 | 16, 17 | 29.5d | 0d |  |  |  |
| 20 | 2.6 | Milestone: RC Completed | milestone | 0d | 2008-09-10 | 2008-09-10 | 19 | 29.5d |  |  |  |  |
| 21 | 3 | **Construction RC2** |  | 18.5d? | 2008-08-28 | 2008-09-24 |  | 0d |  |  |  | 748h |
| 22 | 3.1 | Milestone: Begin RC2 Construction | milestone | 0d | 2008-08-28 | 2008-08-28 | 9 | 0d |  |  |  |  |
| 23 | 3.2 | Project Management |  | 1d? | 2008-08-29 | 2008-08-29 | 22 | 37.5d |  |  |  |  |
| 24 | 3.3 | **Implementation** |  | 9.5d | 2008-08-28 | 2008-09-11 |  | 0d |  |  |  | 380h |
| 25 | 3.3.1 | Milestone: Begin RC2 Implementation | milestone | 0d | 2008-08-28 | 2008-08-28 | 22 | 0d |  |  |  |  |
| 26 | 3.3.2 | Address RC bugs |  | 9d | 2008-08-29 | 2008-09-10 | 25 | 0d |  |  | dkokotov; slustbader; mshestopalov; jgill; bpickeral | 360h |
| 27 | 3.3.3 | Verify Defects on DEV |  | 0.5d | 2008-09-11 | 2008-09-11 | 26 | 0d |  |  | dkokotov; slustbader; mshestopalov; jgill; bpickeral | 20h |
| 28 | 3.3.4 | Milestone: Deploy RC2 to QA | milestone | 0d | 2008-09-11 | 2008-09-11 | 27 | 0d |  |  |  |  |

| ID | WBS | Task | Type | Duration | Start | Finish | Predecessors | Total slack | Free slack | Resources | Work |
| --- | --- | --- | --- | --- | --- | --- | --- | --- | --- | --- | --- |
| 29 | 3.4 | **Test** |  | 9d | 2008-09-11 | 2008-09-24 |  | 14d |  |  | 368h |
| 30 | 3.4.1 | Milestone: Begin RC2 Testing | milestone | 0d | 2008-09-11 | 2008-09-11 | 28 | 15d | 0d |  |  |
| 31 | 3.4.2 | Verify Defects on QA |  | 4d | 2008-09-11 | 2008-09-17 | 30 | 15d | 0d | reedya; keener; misquitta | 96h |
| 32 | 3.4.3 | Regression Test |  | 5d | 2008-09-11 | 2008-09-18 | 28 | 14d | 0d | reedya; keener; misquitta | 120h |
| 33 | 3.4.4 | Deploy to Stage |  | 1d | 2008-09-17 | 2008-09-18 | 31 | 20d | 0d |  |  |
| 34 | 3.4.5 | Stage Test |  | 4d | 2008-09-18 | 2008-09-24 | 33 | 20d | 0d | reedya; keener; misquitta | 96h |
| 35 | 3.4.6 | Installer Testing |  | 3d | 2008-09-18 | 2008-09-23 | 31, 32 | 15d | 1d | keener | 24h |
| 36 | 3.4.7 | Installer Testing - kc |  | 4d | 2008-09-18 | 2008-09-24 | 31, 32 | 14d | 0d | kc | 32h |
| 37 | 3.4.8 | Security Scan |  | 4d | 2008-09-18 | 2008-09-24 | 33 | 20d | 0d |  |  |
| 38 | 3.4.9 | Deployment Test |  | 2d | 2008-09-18 | 2008-09-22 | 31, 32 | 22d | 2d |  |  |
| 39 | 3.4.10 | Milestone: RC2 testing completed | milestone | 0d | 2008-09-24 | 2008-09-24 | 34, 35, 38, 36, 37 | 20d | 0d |  |  |
| 40 | 3.5 | Milestone: RC2 Completed | milestone | 0d | 2008-09-24 | 2008-09-24 | 39 | 20d |  |  |  |
| 41 | 4 | **Construction RC3** |  | 16.5d? | 2008-09-11 | 2008-10-03 |  | 0d |  |  | 572h |
| 42 | 4.1 | Milestone: Begin RC3 Construction | milestone | 0d | 2008-09-11 | 2008-09-11 | 28 | 26d | 0d |  |  |
| 43 | 4.2 | Project Management |  | 3d? | 2008-09-11 | 2008-09-16 | 42 | 26d |  | reedya; keener; misquitta | 72h |
| 44 | 4.3 | **Implementation** |  | 9.5d | 2008-09-11 | 2008-09-24 |  | 0d |  |  | 380h |
| 45 | 4.3.1 | Milestone: Begin RC3 Implementation | milestone | 0d | 2008-09-11 | 2008-09-11 | 42 | 29d |  |  |  |
| 46 | 4.3.2 | Address RC2 bugs |  | 9d | 2008-09-11 | 2008-09-24 | 28 | 0d |  | dkokotov; slustbader; mshestopalov; jgill; bpickeral | 360h |
| 47 | 4.3.3 | Verify Defects on DEV |  | 0.5d | 2008-09-24 | 2008-09-24 | 46 | 0d |  | dkokotov; slustbader; mshestopalov; jgill; bpickeral | 20h |
| 48 | 4.3.4 | Milestone: Deploy RC3 to QA | milestone | 0d | 2008-09-24 | 2008-09-24 | 47 | 0d |  |  |  |
| 49 | 4.4 | **Test** |  | 7d | 2008-09-24 | 2008-10-03 |  | 0d |  |  | 120h |
| 50 | 4.4.1 | Milestone: Begin RC3 Testing | milestone | 0d | 2008-09-24 | 2008-09-24 | 48 | 0d |  |  |  |
| 51 | 4.4.2 | Regression Test |  | 3d | 2008-09-25 | 2008-09-29 | 48 | 1d | 0d | reedya; keener; misquitta | 72h |
| 52 | 4.4.3 | Verify Defects on QA |  | 2d | 2008-09-25 | 2008-09-26 | 50 | 0d |  |  |  |
| 53 | 4.4.4 | Deploy to Stage |  | 1d | 2008-09-29 | 2008-09-29 | 52 | 0d |  |  |  |
| 54 | 4.4.5 | Stage Test |  | 4d | 2008-09-30 | 2008-10-03 | 53 | 0d |  |  |  |
| 55 | 4.4.6 | LSD compliance testing |  | 3d | 2008-09-30 | 2008-10-02 | 51 | 1d |  |  |  |
| 56 | 4.4.7 | Installer Testing |  | 3d | 2008-09-30 | 2008-10-02 | 51, 53 | 1d | 0d | keener | 24h |
| 57 | 4.4.8 | Installer Testing - kc |  | 3d | 2008-09-30 | 2008-10-02 | 51, 53 | 1d | 0d | kc | 24h |
| 58 | 4.4.9 | Security scan |  | 4d | 2008-09-29 | 2008-10-02 | 52 | 1d |  |  |  |
| 59 | 4.4.10 | Deployment Test |  | 2d | 2008-09-30 | 2008-10-01 | 52, 51 | 2d |  |  |  |
| 60 | 4.4.11 | Milestone: RC3 testing completed | milestone | 0d | 2008-10-03 | 2008-10-03 | 56, 57, 55, 54, 59 | 0d |  |  |  |
| 61 | 4.5 | Milestone: RC3 Completed | milestone | 0d | 2008-10-03 | 2008-10-03 | 60 | 12.5d |  |  |  |

| ID | WBS | Task | Type | Duration | Start | Finish | Predecessors | Total slack | Free slack | Constraint | Resources | Work |
| --- | --- | --- | --- | --- | --- | --- | --- | --- | --- | --- | --- | --- |
| 62 | 5 | **Construction RC4 - GA** |  | 10d? | 2008-10-02 | 2008-10-16 |  | 1d |  |  |  | 240h |
| 63 | 5.1 | Milestone:Begin RC4 Construction | milestone | 0d | 2008-10-02 | 2008-10-02 | 58 | 1d | 0d |  |  |  |
| 64 | 5.2 | Project Management |  | 1d? | 2008-10-03 | 2008-10-03 | 63 | 12.5d |  |  |  |  |
| 65 | 5.3 | **Implementation** |  | 2.5d | 2008-10-03 | 2008-10-08 | 60 | 0d |  |  |  |  |
| 66 | 5.3.1 | Milestone: Begin RC4 Implementation | milestone | 0d | 2008-10-03 | 2008-10-03 | 63 | 0d |  |  |  |  |
| 67 | 5.3.2 | Verify Defects on DEV |  | 0.5d | 2008-10-08 | 2008-10-08 | 69 | 0d |  |  |  |  |
| 68 | 5.3.3 | Milestone: Deploy GA to QA | milestone | 0d | 2008-10-08 | 2008-10-08 | 67 | 0d |  |  |  |  |
| 69 | 5.3.4 | Address bugs |  | 2d | 2008-10-06 | 2008-10-07 | 66 | 0d |  |  |  |  |
| 70 | 5.3.5 | Regression Test |  | 3d | 2008-10-08 | 2008-10-13 | 68 | 7d |  | start no earlier than 2008-09-26 | reedya; keener; misquitta | 72h |
| 71 | 5.4 | **Test** |  | 6.5d | 2008-10-08 | 2008-10-16 |  | 0d |  |  |  | 240h |
| 72 | 5.4.1 | Milestone: Begin RC4 Testing | milestone | 0d | 2008-10-08 | 2008-10-08 | 68 | 0d |  |  |  |  |
| 73 | 5.4.2 | Verify Defects on QA |  | 2d | 2008-10-08 | 2008-10-10 | 72 | 0d |  | start no earlier than 2008-09-26 | reedya; keener; misquitta | 48h |
| 74 | 5.4.3 | Deploy to Stage |  | 0.5d | 2008-10-10 | 2008-10-10 | 73 | 0d |  | start no earlier than 2008-09-30 |  |  |
| 75 | 5.4.4 | Stage Test |  | 3d | 2008-10-13 | 2008-10-15 | 74 | 1d | 0d | start no earlier than 2008-09-30 | reedya; keener; misquitta | 72h |
| 76 | 5.4.5 | Installer Testing |  | 3d | 2008-10-10 | 2008-10-15 | 73 | 1.5d |  | start no earlier than 2008-10-01 | keener | 24h |
| 77 | 5.4.6 | Installer Testing - kc |  | 3d | 2008-10-10 | 2008-10-15 | 73 | 1.5d |  | start no earlier than 2008-10-01 | kc | 24h |
| 78 | 5.4.7 | LSD compliance testing |  | 3d | 2008-10-10 | 2008-10-15 | 73 | 1.5d |  | start no earlier than 2008-10-01 |  |  |
| 79 | 5.4.8 | Security scan |  | 4d | 2008-10-13 | 2008-10-16 | 74 | 0d |  | start no earlier than 2008-09-30 |  |  |
| 80 | 5.4.9 | Milestone: GA testing completed | milestone | 0d | 2008-10-16 | 2008-10-16 | 75, 76, 77, 78, 79 | 0d |  | start no earlier than 2008-10-03 |  |  |
| 81 | 6 | **Configuration and Change Management** |  | 36d | 2008-08-28 | 2008-10-17 |  | 2.5d |  |  |  |  |
| 82 | 6.1 | **Milestone: Begin Configuration and Change Management** |  | 0d | 2008-08-28 | 2008-08-28 | 9 | 20.5d |  |  |  |  |
| 83 | 6.1.1 | **GUI change summary to Jill** |  | 5d | 2008-08-29 | 2008-09-04 | 90 | 20.5d | 0d |  |  |  |
| 84 | 6.1.1.1 | Update User Guide |  | 5d | 2008-09-05 | 2008-09-11 | 83 | 20.5d | 0d |  |  |  |
| 85 | 6.2 | **Documentation** |  | 32d | 2008-08-28 | 2008-10-13 |  | 6.5d |  |  |  |  |
| 86 | 6.2.1 | **Milestone: Begin Documentation** |  | 0d | 2008-08-28 | 2008-08-28 | 82 | 20.5d |  |  |  |  |
| 87 | 6.2.1.1 | Review User Guide |  | 5d | 2008-09-12 | 2008-09-18 | 84 | 20.5d | 0d |  |  |  |

| ID | WBS | Task | Type | Duration | Start | Finish | Predecessors | Total slack | Free slack |
| --- | --- | --- | --- | --- | --- | --- | --- | --- | --- |
| 88 | 6.2.2 | **Update User Guide** |  | 18d | 2008-08-28 | 2008-09-23 |  | 20.5d |  |
| 89 | 6.2.2.1 | Incorporate feedback to User Guide |  | 3d | 2008-09-19 | 2008-09-23 | 87 | 20.5d | 0d |
| 90 | 6.2.2.2 | Milestone: Begin User Guide Update | milestone | 0d | 2008-08-28 | 2008-08-28 | 86 | 20.5d | 0d |
| 91 | 6.2.2.3 | Milestone: User Guide updated for 2.1.1 | milestone | 0d | 2008-09-23 | 2008-09-23 | 89 | 20.5d |  |
| 92 | 6.2.2.4 | Milestone: Begin Install Guide Update | milestone | 0d | 2008-09-24 | 2008-09-24 | 35, 36 | 14d | 0d |
| 93 | 6.2.2.5 | Send installer guide update to Jill: RC2 |  | 3d | 2008-09-24 | 2008-09-29 | 92 | 14d | 0d |
| 94 | 6.2.2.6 | Update installer guide: RC2 |  | 3d | 2008-09-29 | 2008-10-02 | 93 | 14d |  |
| 95 | 6.2.2.7 | Send installer guide update to Jill: RC3 |  | 3d | 2008-10-03 | 2008-10-07 | 56, 57 | 6.5d | 0d |
| 96 | 6.2.3 | **Update Installer Guide** |  | 13.5d | 2008-09-24 | 2008-10-13 |  | 6.5d |  |
| 97 | 6.2.3.1 | Update installer guide: RC3 |  | 3d | 2008-10-08 | 2008-10-10 | 95 | 6.5d | 0d |
| 98 | 6.2.3.2 | Review installer guide |  | 1d | 2008-10-13 | 2008-10-13 | 97 | 6.5d | 0d |
| 99 | 6.2.3.3 | Milestone: Installer Guide for 2.1.1 updated | milestone | 0d | 2008-10-13 | 2008-10-13 | 98 | 6.5d |  |
| 100 | 6.2.4 | Milestone: Complete Documentation | milestone | 0d | 2008-10-13 | 2008-10-13 | 91, 99 | 6.5d |  |
| 101 | 6.3 | **Release Artifacts** |  | 10d | 2008-10-03 | 2008-10-17 |  | 2.5d |  |
| 102 | 6.3.1 | Milestone: Begin release artifact preparation | milestone | 0d | 2008-10-03 | 2008-10-03 | 60 | 4.5d | 0d |
| 103 | 6.3.2 | Prepare 2.1.1 Release Note |  | 2d | 2008-10-06 | 2008-10-07 | 102 | 4.5d | 0d |
| 104 | 6.3.3 | Prepare 2.1.1 client.jar |  | 1d | 2008-10-16 | 2008-10-16 | 75 | 3.5d | 1d |
| 105 | 6.3.4 | Prepare 2.1.1 javadoc |  | 1d | 2008-10-16 | 2008-10-16 | 75 | 3.5d | 1d |
| 106 | 6.3.5 | Prepare 2.1.1 source.zip |  | 1d | 2008-10-16 | 2008-10-16 | 75 | 3.5d | 1d |
| 107 | 6.3.6 | Update Download Center |  | 6d | 2008-10-08 | 2008-10-15 | 103 | 4.5d | 2d |
| 108 | 6.3.7 | Update Tools Page |  | 2d | 2008-10-16 | 2008-10-17 | 75 | 2.5d | 0d |
| 109 | 6.3.8 | Update LSD Files Tab |  | 1d | 2008-10-16 | 2008-10-16 | 75 | 3.5d | 1d |
| 110 | 6.3.9 | Update Landing Site |  | 2d | 2008-10-16 | 2008-10-17 | 75 | 2.5d | 0d |
| 111 | 6.3.10 | Milestone: Complete release artifact preparation | milestone | 0d | 2008-10-17 | 2008-10-17 | 103, 104, 105, 106, 107, 108, 109, 110 | 2.5d |  |
| 112 | 6.4 | Milestone: Complete Configuration Management | milestone | 0d | 2008-10-17 | 2008-10-17 | 100, 111 | 2.5d |  |

| ID | WBS | Task | Type | Duration | Start | Finish | Predecessors | Total slack |
| --- | --- | --- | --- | --- | --- | --- | --- | --- |
| 113 | 7 | **Environment** |  | 3.5d | 2008-10-16 | 2008-10-22 |  | 0d |
| 114 | 7.1 | Milestone: Begin deployment to PROD activities | milestone | 0d | 2008-10-16 | 2008-10-16 | 80 | 0d |
| 115 | 7.2 | Deploy to PROD |  | 0.5d | 2008-10-17 | 2008-10-17 | 114 | 0d |
| 116 | 7.3 | Verify PROD Deployment |  | 3d | 2008-10-17 | 2008-10-22 | 115 | 0d |
| 117 | 7.4 | Milestone: Complete PROD deployment activities | milestone | 0d | 2008-10-22 | 2008-10-22 | 116 | 0d |
| 118 | 8 | Milestone: Complete 2.1.1 | milestone | 0d | 2008-10-22 | 2008-10-22 | 117 | 0d |
