# caarray_schedule_2_3_0

Schedule from MS Project, 2008-10-13 to 2009-06-29, A marks actual dates.
5AM Solutions, Inc.

## Calendars

- Standard: Mon-Fri 08:00-12:00, 13:00-17:00; Sat-Sun off. Exceptions (off unless hours are given): 2008-11-11 (Veterans Day), 2008-11-27 to 2008-11-28 (Thanksgiving), 2008-12-24 to 2009-01-02 (Christmas to New Years), 2009-01-19 (Martin Luther King's Day), 2009-01-20 (Inauguration Day), 2009-02-16 (President's Day), 2009-05-25 (Memorial Day).

## Resources

| Resource |
| --- |
| rsrinivasa |
| dkokotov |
| klemmj |
| duncanmk |
| slustbader |
| mshestopalov |
| dharley |
| lmisquitta |
| areddy |
| khann |
| tboal |
| jhadfield |
| mduncan |
| jklemm |

## Schedule

| ID | WBS | Task | Type | Duration | Start | Finish | Predecessors | Complete | Remaining | Total slack | Free slack | Constraint | Resources | Work |
| --- | --- | --- | --- | --- | --- | --- | --- | --- | --- | --- | --- | --- | --- | --- |
| 1 | 1 | **caArray 2.3.0** |  | 171d | 2008-10-13 A | 2009-06-29 |  | 38% | 106.62d | 9d |  |  |  | 320h |
| 2 | 1.1 | **Inception and Elaboration** |  | 40d | 2008-10-13 A | 2008-12-10 |  | 99% | 0d | 0d |  |  |  | 320h |
| 3 | 1.1.1 | Milestone: Begin Inception and Elaboration | milestone | 0d | 2008-10-13 A | 2008-10-13 A |  | 100% |  |  |  |  |  |  |
| 4 | 1.1.2 | **Requirements analysis** |  | 40d | 2008-10-13 A | 2008-12-10 |  | 99% | 0d | 0d |  |  | rsrinivasa | 320h |
| 5 | 1.1.2.1 | Use cases |  | 15d | 2008-10-13 A | 2008-10-31 A |  | 100% |  |  |  |  |  |  |
| 6 | 1.1.2.2 | Design new service model and API |  | 15d | 2008-11-03 A | 2008-11-24 A | 5 | 100% |  |  |  |  |  |  |
| 7 | 1.1.2.3 | Internal and external reviews of new service model/API |  | 10d | 2008-11-25 A | 2008-12-10 A | 6 | 100% |  |  |  |  |  |  |
| 8 | 1.1.3 | **Project Management** |  | 40d | 2008-10-13 A | 2008-12-10 A |  | 100% |  |  |  |  |  |  |
| 9 | 1.1.3.1 | Define scope |  | 40d | 2008-10-13 A | 2008-12-10 A |  | 100% |  |  |  |  |  |  |
| 10 | 1.1.3.2 | Estimate LOEs |  | 40d | 2008-10-13 A | 2008-12-10 A |  | 100% |  |  |  |  |  |  |
| 11 | 1.1.4 | Milestone: Complete Inception and Elaboration | milestone | 0d | 2008-12-10 A | 2008-12-10 A | 4, 9, 10 | 100% |  |  |  |  |  |  |
| 12 | 1.2 | **Construction Alpha1** |  | 46d | 2008-12-10 A | 2009-02-27 |  | 77% | 10.54d | 94d |  |  |  |  |
| 13 | 1.2.1 | Milestone: Begin Alpha1 Construction | milestone | 0d | 2008-12-10 | 2008-12-10 | 4 |  |  | 5d |  |  |  |  |
| 14 | 1.2.2 | **Implementation** |  | 25d | 2008-12-16 A | 2009-02-02 A |  | 100% |  |  |  |  |  |  |
| 15 | 1.2.2.1 | Implement Alpha1 items |  | 22d | 2008-12-16 A | 2009-01-28 A | 13 | 100% |  |  |  | finish no earlier than 2009-01-28 |  |  |
| 16 | 1.2.2.2 | Verify Alpha1 items on DEV tier |  | 1d | 2009-01-29 A | 2009-01-29 A | 15 | 100% |  |  |  |  |  |  |
| 17 | 1.2.2.3 | Milestone: Deploy Alpha1 to QA | milestone | 1d | 2009-02-02 A | 2009-02-02 A |  | 100% |  |  |  | start no earlier than 2009-02-02 |  |  |
| 18 | 1.2.3 | **QA Testing** |  | 18d | 2009-02-03 A | 2009-02-27 | 17 | 54% | 8.25d | 94d |  |  |  |  |
| 19 | 1.2.3.1 | Verify new items on QA |  | 10d | 2009-02-03 A | 2009-02-17 A |  | 100% |  |  |  |  |  |  |
| 20 | 1.2.3.2 | Regression test on QA |  | 3d | 2009-02-03 A | 2009-02-05 A |  | 100% |  |  |  |  |  |  |
| 21 | 1.2.3.3 | Deploy Alpha1 to STAGE |  | 1d | 2009-02-18 | 2009-02-18 | 19, 20 |  |  | 6d | 0d |  |  |  |
| 22 | 1.2.3.4 | Verify new items on STAGE |  | 7d | 2009-02-19 | 2009-02-27 | 21 |  |  | 6d | 0d |  |  |  |
| 23 | 1.2.3.5 | Regression test on STAGE |  | 3d | 2009-02-19 | 2009-02-23 | 21 |  |  | 19d | 4d |  |  |  |
| 24 | 1.2.3.6 | Milestone: Complete Alpha1 QA testing | milestone | 0d | 2009-02-27 | 2009-02-27 | 22, 23 |  |  | 94d | 0d |  |  |  |
| 25 | 1.2.4 | Milestone: Complete Alpha1 Construction | milestone | 0d | 2009-02-27 | 2009-02-27 | 24 |  |  | 94d |  |  |  |  |

| ID | WBS | Task | Type | Duration | Start | Finish | Predecessors | Total slack | Free slack |
| --- | --- | --- | --- | --- | --- | --- | --- | --- | --- |
| 26 | 1.3 | **Construction Alpha2** |  | 42d | 2009-02-02 | 2009-04-02 |  | 0d |  |
| 27 | 1.3.1 | Milestone: Begin Alpha2 Construction | milestone | 0d | 2009-02-02 | 2009-02-02 | 17 | 0d |  |
| 28 | 1.3.2 | **Implementation** |  | 22d | 2009-02-03 | 2009-03-05 |  | 0d |  |
| 29 | 1.3.2.1 | Implement Alpha2 items |  | 20d | 2009-02-03 | 2009-03-03 | 27 | 0d |  |
| 30 | 1.3.2.2 | Verify Alpha2 items on DEV tier |  | 1d | 2009-03-04 | 2009-03-04 | 29 | 0d |  |
| 31 | 1.3.2.3 | Milestone: Deploy Alpha2 to QA | milestone | 1d | 2009-03-05 | 2009-03-05 | 30 | 0d |  |
| 32 | 1.3.3 | **QA Testing** |  | 20d | 2009-03-06 | 2009-04-02 | 31 | 2d |  |
| 33 | 1.3.3.1 | Verify new items on QA |  | 12d | 2009-03-06 | 2009-03-23 | 31, 22 | 2d | 0d |
| 34 | 1.3.3.2 | Regression test on QA |  | 3d | 2009-03-06 | 2009-03-10 | 31, 23 | 11d | 9d |
| 35 | 1.3.3.3 | Deploy Alpha2 to STAGE |  | 1d | 2009-03-24 | 2009-03-24 | 33, 34 | 53d | 0d |
| 36 | 1.3.3.4 | Verify new items on STAGE |  | 7d | 2009-03-25 | 2009-04-02 | 35 | 53d | 0d |
| 37 | 1.3.3.5 | Regression test on STAGE |  | 3d | 2009-03-25 | 2009-03-27 | 35 | 57d | 4d |
| 38 | 1.3.3.6 | Installer testing |  | 3d | 2009-03-24 | 2009-03-26 | 33 | 58d | 5d |
| 39 | 1.3.3.7 | Milestone: Complete Alpha2 QA testing | milestone | 0d | 2009-04-02 | 2009-04-02 | 36, 37, 38 | 70d | 0d |
| 40 | 1.3.4 | Milestone: Complete Alpha2 Construction | milestone | 0d | 2009-04-02 | 2009-04-02 | 39 | 53d |  |
| 41 | 1.4 | **Construction RC1** |  | 45d | 2009-03-05 | 2009-05-07 |  | 0d |  |
| 42 | 1.4.1 | Milestone: Begin RC1 Construction | milestone | 0d | 2009-03-05 | 2009-03-05 | 31 | 0d |  |
| 43 | 1.4.2 | **Implementation** |  | 22d | 2009-03-06 | 2009-04-06 |  | 0d |  |
| 44 | 1.4.2.1 | Implement RC1 items |  | 20d | 2009-03-06 | 2009-04-02 | 42 | 0d |  |
| 45 | 1.4.2.2 | Verify RC1 items on DEV tier |  | 1d | 2009-04-03 | 2009-04-03 | 44 | 0d |  |
| 46 | 1.4.2.3 | Milestone: Deploy RC1 to QA | milestone | 1d | 2009-04-06 | 2009-04-06 | 45 | 0d |  |
| 47 | 1.4.3 | **QA Testing** |  | 23d | 2009-04-07 | 2009-05-07 | 46 | 0d |  |
| 48 | 1.4.3.1 | Verify new items on QA |  | 12d | 2009-04-07 | 2009-04-22 | 46, 36 | 0d |  |
| 49 | 1.4.3.2 | Regression test on QA |  | 3d | 2009-04-07 | 2009-04-09 | 37 | 45d | 0d |
| 50 | 1.4.3.3 | Deployment test on QA-VM |  | 3d | 2009-04-10 | 2009-04-14 | 49 | 45d |  |
| 51 | 1.4.3.4 | Deploy RC1 to STAGE |  | 1d | 2009-04-23 | 2009-04-23 | 48, 49 | 0d |  |
| 52 | 1.4.3.5 | Verify new items on STAGE |  | 7d | 2009-04-24 | 2009-05-04 | 51 | 0d |  |
| 53 | 1.4.3.6 | Regression test on STAGE |  | 3d | 2009-04-24 | 2009-04-28 | 51 | 38d | 4d |
| 54 | 1.4.3.7 | Installer testing |  | 3d | 2009-04-07 | 2009-04-09 |  | 65d |  |
| 55 | 1.4.3.8 | App scan on STAGE |  | 3d | 2009-05-05 | 2009-05-07 | 51, 52, 53 | 45d | 0d |
| 56 | 1.4.3.9 | Milestone: Complete RC1 QA testing | milestone | 0d | 2009-04-23 | 2009-04-23 | 51 | 53d | 0d |
| 57 | 1.4.4 | Milestone: Complete RC1 Construction | milestone | 0d | 2009-04-23 | 2009-04-23 | 56 | 53d |  |

| ID | WBS | Task | Type | Duration | Start | Finish | Predecessors | Total slack | Free slack |
| --- | --- | --- | --- | --- | --- | --- | --- | --- | --- |
| 58 | 1.5 | **Construction RC2** |  | 36d | 2009-04-06 | 2009-05-27 |  | 8d |  |
| 59 | 1.5.1 | Milestone: Begin RC2 Construction | milestone | 0d | 2009-04-06 | 2009-04-06 | 46 | 11d | 0d |
| 60 | 1.5.2 | **Implementation** |  | 12d | 2009-04-07 | 2009-04-22 |  | 8d |  |
| 61 | 1.5.2.1 | Implement RC2 items |  | 10d | 2009-04-07 | 2009-04-20 | 59 | 11d | 0d |
| 62 | 1.5.2.2 | Verify RC2 items on DEV tier |  | 1d | 2009-04-21 | 2009-04-21 | 61 | 11d | 0d |
| 63 | 1.5.2.3 | Milestone: Deploy RC2 to QA | milestone | 1d | 2009-04-22 | 2009-04-22 | 62 | 11d | 0d |
| 64 | 1.5.3 | **QA Testing** |  | 24d | 2009-04-23 | 2009-05-27 | 63 | 8d |  |
| 65 | 1.5.3.1 | Verify new items on QA |  | 8d | 2009-05-05 | 2009-05-14 | 63, 52 | 0d |  |
| 66 | 1.5.3.2 | Regression test on QA |  | 3d | 2009-04-29 | 2009-05-01 | 63, 53 | 11d |  |
| 67 | 1.5.3.3 | Deploy RC2 to STAGE |  | 1d | 2009-05-15 | 2009-05-15 | 65, 66 | 0d |  |
| 68 | 1.5.3.4 | Verify new items on STAGE |  | 7d | 2009-05-18 | 2009-05-27 | 67 | 0d |  |
| 69 | 1.5.3.5 | Regression test on STAGE |  | 3d | 2009-05-18 | 2009-05-20 | 67 | 6d | 0d |
| 70 | 1.5.3.6 | Installer testing |  | 3d | 2009-04-23 | 2009-04-27 |  | 51d |  |
| 71 | 1.5.3.7 | App scan on STAGE |  | 3d | 2009-05-18 | 2009-05-20 | 67 | 27d | 4d |
| 72 | 1.5.3.8 | Milestone: Complete RC2 QA testing | milestone | 0d | 2009-05-27 | 2009-05-27 | 68, 69, 71 | 23d | 0d |
| 73 | 1.5.4 | Milestone: Complete RC2 Construction | milestone | 0d | 2009-05-27 | 2009-05-27 | 72 | 23d |  |
| 74 | 1.6 | **Construction RC3** |  | 42d | 2009-04-22 | 2009-06-22 |  | 5d |  |
| 75 | 1.6.1 | Milestone: Begin RC3 Construction | milestone | 0d | 2009-04-22 | 2009-04-22 | 63 | 14d | 0d |
| 76 | 1.6.2 | **Implementation** |  | 12d | 2009-04-23 | 2009-05-08 |  | 14d |  |
| 77 | 1.6.2.1 | Implement RC3 items |  | 10d | 2009-04-23 | 2009-05-06 | 75 | 14d | 0d |
| 78 | 1.6.2.2 | Verify RC3 items on DEV tier |  | 1d | 2009-05-07 | 2009-05-07 | 77 | 14d | 0d |
| 79 | 1.6.2.3 | Milestone: Deploy RC3 to QA | milestone | 1d | 2009-05-08 | 2009-05-08 | 78 | 14d | 0d |
| 80 | 1.6.3 | **QA Testing** |  | 30d | 2009-05-11 | 2009-06-22 | 79 | 5d |  |
| 81 | 1.6.3.1 | Verify new items on QA |  | 5d | 2009-05-28 | 2009-06-03 | 79, 68 | 0d |  |
| 82 | 1.6.3.2 | Regression test on QA |  | 3d | 2009-05-21 | 2009-05-26 | 79, 69 | 6d | 0d |
| 83 | 1.6.3.3 | Deployment test on QA-VM |  | 5d | 2009-05-27 | 2009-06-02 | 82 | 19d |  |
| 84 | 1.6.3.4 | Deploy RC3 to STAGE |  | 1d | 2009-06-04 | 2009-06-04 | 81, 82 | 0d |  |
| 85 | 1.6.3.5 | Verify new items on STAGE |  | 7d | 2009-06-10 | 2009-06-18 | 84, 87 | 0d |  |
| 86 | 1.6.3.6 | Regression test on STAGE |  | 3d | 2009-06-10 | 2009-06-12 | 84, 87 | 4d |  |
| 87 | 1.6.3.7 | App scan on STAGE |  | 3d | 2009-06-05 | 2009-06-09 | 84 | 0d |  |
| 88 | 1.6.3.8 | Installer testing |  | 3d | 2009-05-11 | 2009-05-13 |  | 32d |  |
| 89 | 1.6.3.9 | LSD compliance testing |  | 2d | 2009-06-19 | 2009-06-22 | 88, 85, 86 | 0d |  |
| 90 | 1.6.3.10 | Milestone: Complete RC3 QA testing | milestone | 0d | 2009-06-22 | 2009-06-22 | 85, 86, 89 | 0d |  |
| 91 | 1.6.4 | Milestone: Complete RC3 Construction | milestone | 0d | 2009-06-22 | 2009-06-22 | 90 | 2d | 0d |

| ID | WBS | Task | Type | Duration | Start | Finish | Predecessors | Total slack | Free slack |
| --- | --- | --- | --- | --- | --- | --- | --- | --- | --- |
| 92 | 1.7 | **Transition** |  | 59d | 2009-04-07 | 2009-06-29 |  | 0d |  |
| 93 | 1.7.1 | **CBIIT Deployment** |  | 3d | 2009-06-23 | 2009-06-25 | 91 | 2d |  |
| 94 | 1.7.1.1 | Deploy to PROD |  | 2d | 2009-06-23 | 2009-06-24 |  | 2d | 0d |
| 95 | 1.7.1.2 | Verify PROD deployment |  | 1d | 2009-06-25 | 2009-06-25 | 94 | 2d | 0d |
| 96 | 1.7.1.3 | Milestone: Complete PROD deployment | milestone | 0d | 2009-06-25 | 2009-06-25 | 95 | 2d |  |
| 97 | 1.7.2 | **All Release Artifacts** |  | 59d | 2009-04-07 | 2009-06-29 |  | 0d |  |
| 98 | 1.7.2.1 | **User's Guide** |  | 21d | 2009-04-07 | 2009-05-05 |  | 41d |  |
| 99 | 1.7.2.1.1 | Send changes to Jill |  | 1d | 2009-04-07 | 2009-04-07 | 46 | 41d | 0d |
| 100 | 1.7.2.1.2 | Update User's Guide |  | 15d | 2009-04-08 | 2009-04-28 | 99 | 41d | 0d |
| 101 | 1.7.2.1.3 | Revise User's Guide after review |  | 5d | 2009-04-29 | 2009-05-05 | 100 | 41d | 0d |
| 102 | 1.7.2.1.4 | Milestone: Complete User's Guide | milestone | 0d | 2009-05-05 | 2009-05-05 | 101 | 41d |  |
| 103 | 1.7.2.2 | **Installation Guide** |  | 22d | 2009-04-23 | 2009-05-22 |  | 28d |  |
| 104 | 1.7.2.2.1 | Update BDA wiki page with installer properties |  | 1d | 2009-04-23 | 2009-04-23 | 63 | 28d | 0d |
| 105 | 1.7.2.2.2 | Send changes to Jill |  | 1d | 2009-04-24 | 2009-04-24 | 104 | 28d | 0d |
| 106 | 1.7.2.2.3 | Update Installation Guide |  | 15d | 2009-04-27 | 2009-05-15 | 105 | 28d | 0d |
| 107 | 1.7.2.2.4 | Revise Installation Guide after review |  | 5d | 2009-05-18 | 2009-05-22 | 106 | 28d | 0d |
| 108 | 1.7.2.2.5 | Milestone: Complete Installation Guide | milestone | 0d | 2009-05-22 | 2009-05-22 | 107 | 28d |  |
| 109 | 1.7.2.3 | **Other Release Artifacts** |  | 1d | 2009-06-23 | 2009-06-23 | 90 | 0d |  |
| 110 | 1.7.2.3.1 | Prepare Release Notes |  | 1d | 2009-06-23 | 2009-06-23 |  | 0d |  |
| 111 | 1.7.2.3.2 | Prepare Client Libraries and javadoc |  | 1d | 2009-06-23 | 2009-06-23 |  | 0d |  |
| 112 | 1.7.2.3.3 | Prepare installer packages |  | 1d | 2009-06-23 | 2009-06-23 |  | 0d |  |
| 113 | 1.7.2.3.4 | Milestone: Complete other release artifacts | milestone | 0d | 2009-06-23 | 2009-06-23 | 110, 111, 112 | 0d |  |
| 114 | 1.7.2.4 | **Update sites and Announce release** |  | 4d | 2009-06-24 | 2009-06-29 | 108, 102, 113 | 0d |  |
| 115 | 1.7.2.4.1 | Update caArray Gforge site |  | 1d | 2009-06-24 | 2009-06-24 |  | 3d |  |
| 116 | 1.7.2.4.2 | Update Download Centre page |  | 4d | 2009-06-24 | 2009-06-29 |  | 0d |  |
| 117 | 1.7.2.4.3 | Update Tools page |  | 1d | 2009-06-24 | 2009-06-24 |  | 3d |  |
| 118 | 1.7.2.4.4 | Update Landing site |  | 1d | 2009-06-24 | 2009-06-24 |  | 3d |  |
| 119 | 1.7.2.4.5 | Update LSD Gforge site |  | 1d | 2009-06-24 | 2009-06-24 |  | 3d |  |
| 120 | 2 | caArray 2.3.0 Closeout | milestone | 0d | 2009-06-29 | 2009-06-29 | 97, 96 | 0d |  |
